# RF-140 — Duplicação e Restauração — km 12+000 ao km 36+000 (exemplo fictício) — Rev. 03

How a schedule from MS Project changed from version to version. A marks actual dates.

## Version 1 (data date 2026-09-30, saved 2026-11-25, file rodovia-ficticia-rev03.mpp)

Note of the change: Example: the two revisions as .mpp, to try the Project tab

| ID | WBS | Task | Duration | Start | Finish | Predecessors | Complete | Total float |
| --- | --- | --- | --- | --- | --- | --- | --- | --- |
| 1 | 1 | **Marcos Contratuais** | 401.25d | 2026-03-02 A | 2027-11-09 |  |  | -3.25d |
| 2 |  | Ordem de Serviço (OS) emitida | 0d | 2026-03-02 A | 2026-03-02 A |  | 100% |  |
| 3 |  | Usina de asfalto licenciada e em operação | 0d | 2026-06-10 A | 2026-06-10 A | 17 | 100% |  |
| 4 |  | Conclusão da terraplenagem — todos os segmentos | 0d | 2027-01-06 | 2027-01-06 | 117 |  | 20d |
| 5 |  | Liberação ao tráfego — Segmento 1 — km 12+000 ao km 18+000 | 0d | 2027-04-23 | 2027-04-23 | 43, 44, 45, 49, 27 |  | -8.12d |
| 6 |  | Liberação ao tráfego — Segmento 2 — km 18+000 ao km 24+000 | 0d | 2027-07-08 | 2027-07-08 | 74, 75, 80, 57 |  | -13.75d |
| 7 |  | Liberação ao tráfego — Segmento 3 — km 24+000 ao km 30+000 | 0d | 2027-06-09 | 2027-06-09 | 104, 105, 106, 110 |  | -16d |
| 8 |  | Liberação ao tráfego — Segmento 4 — km 30+000 ao km 36+000 | 0d | 2027-08-17 | 2027-08-17 | 137, 138, 142, 118 |  | -16.62d |
| 9 |  | Conclusão do Viaduto V-01 (km 27+400) | 0d | 2027-09-10 | 2027-09-10 | 167 |  | -8.25d |
| 10 |  | Termo de Recebimento Provisório (TRP) | 0d | 2027-11-09 | 2027-11-09 | 174 |  | -3.25d |
| 11 | 2 | **Mobilização e Serviços Preliminares** | 69d | 2026-03-02 A | 2026-06-10 A |  | 100% |  |
| 12 |  | Mobilização de pessoal e equipamentos | 15d | 2026-03-02 A | 2026-03-20 A | 2 | 100% |  |
| 13 |  | Instalação do canteiro de obras e alojamentos | 24d | 2026-03-02 A | 2026-04-02 A | 2 | 100% |  |
| 14 |  | Licenças ambientais e autorização de supressão vegetal | 20d | 2026-03-02 A | 2026-03-27 A | 2 | 100% |  |
| 15 |  | Levantamento topográfico e locação do eixo | 20d | 2026-03-23 A | 2026-04-20 A | 12 | 100% |  |
| 16 |  | Projeto executivo — compatibilização e liberação | 23d | 2026-03-02 A | 2026-04-01 A | 2 | 100% |  |
| 17 |  | Instalação da usina de asfalto e da central de britagem | 45d | 2026-04-06 A | 2026-06-10 A | 13 | 100% |  |
| 18 |  | Sinalização provisória de obras e desvios de tráfego | 10d | 2026-03-23 A | 2026-04-06 A | 12 | 100% |  |
| 19 |  | Remanejamento de interferências (redes de terceiros) | 30d | 2026-04-02 A | 2026-05-18 A | 16 | 100% |  |
| 20 | 3 | **Segmento 1 — km 12+000 ao km 18+000** | 238.12d | 2026-04-07 A | 2027-04-23 |  | 51% | -8.12d |
| 21 | 3.1 | **Terraplenagem** | 235.12d | 2026-04-07 A | 2027-04-19 |  | 93% | -5.12d |
| 22 |  | Desmatamento, destocamento e limpeza — Seg. 1 | 15d | 2026-04-07 A | 2026-04-24 A | 14, 18, 15SS | 100% |  |
| 23 |  | Escavação, carga e transporte — material de 1ª categoria — Seg. 1 | 38d | 2026-05-19 A | 2026-07-02 A | 22, 19 | 100% |  |
| 24 |  | Escavação em material de 2ª e 3ª categoria — Seg. 1 | 25d | 2026-05-30 A | 2026-06-29 A | 23SS+10d | 100% |  |
| 25 |  | Aterro compactado — Seg. 1 | 48d | 2026-07-03 A | 2026-08-27 A | 23, 24, 29 | 100% |  |
| 26 |  | Regularização e compactação do subleito — Seg. 1 | 12d | 2026-08-28 A | 2026-09-11 A | 25 | 100% |  |
| 27 |  | Proteção vegetal de taludes (hidrossemeadura) — Seg. 1 | 9.88d | 2027-04-01 | 2027-04-19 | 25, 40 |  | -5.12d |
| 28 | 3.2 | **Drenagem e Obras de Arte Correntes** | 169.5d | 2026-04-27 A | 2027-01-11 |  | 66% | -13.75d |
| 29 |  | Bueiros tubulares de concreto — Seg. 1 | 27.88d | 2026-04-27 A | 2026-06-09 A | 22 | 100% |  |
| 30 |  | Drenos profundos longitudinais — Seg. 1 | 14.88d | 2026-08-31 A | 2026-09-22 A | 25 | 100% |  |
| 31 |  | Sarjetas e valetas de proteção — Seg. 1 | 17.75d | 2026-09-22 A | 2026-10-19 | 30 | 39% | 15d |
| 32 |  | Meios-fios e descidas d'água — Seg. 1 | 14.88d | 2026-12-01 | 2027-01-11 | 31, 37 |  | -13.75d |
| 33 | 3.3 | **Pavimentação** | 107.25d | 2026-09-22 A | 2027-04-01 |  | 8% | -8.12d |
| 34 |  | Sub-base granular — Seg. 1 | 17.75d | 2026-09-22 A | 2026-10-19 | 26, 30 | 39% | -7.75d |
| 35 |  | Base de brita graduada simples (BGS) — Seg. 1 | 17.75d | 2026-09-30 A | 2026-10-27 | 34SS+6d | 5% | -13.75d |
| 36 |  | Imprimação — Seg. 1 | 5.88d | 2026-10-27 | 2026-11-06 | 35, 34, 3 |  | -13.75d |
| 37 |  | CBUQ — camada de ligação (binder) — Seg. 1 | 14.88d | 2026-11-06 | 2026-12-01 | 36 |  | -13.75d |
| 38 |  | Fresagem e reperfilagem da pista existente — Seg. 1 | 14.88d | 2026-12-01 | 2027-01-11 | 37 |  | -13.75d |
| 39 |  | CBUQ — capa de rolamento (pista nova e existente) — Seg. 1 | 17.88d | 2027-01-11 | 2027-03-04 | 38, 32 |  | -13.75d |
| 40 |  | Acostamentos e acabamento de bordos — Seg. 1 | 9.88d | 2027-03-04 | 2027-04-01 | 39 |  | -8.12d |
| 41 | 3.4 | **Sinalização e Segurança Viária** | 29.75d | 2027-03-04 | 2027-04-23 |  |  | -8.12d |
| 42 |  | Sinalização horizontal — Seg. 1 | 7.88d | 2027-03-04 | 2027-03-30 | 39 |  | 2.88d |
| 43 |  | Sinalização vertical e pórticos — Seg. 1 | 9.88d | 2027-03-04 | 2027-04-01 | 39, 42SS |  | 6.75d |
| 44 |  | Defensas metálicas e barreiras — Seg. 1 | 11.88d | 2027-04-01 | 2027-04-23 | 40 |  | -8.12d |
| 45 |  | Tachas e dispositivos auxiliares — Seg. 1 | 4.88d | 2027-03-30 | 2027-04-07 | 42 |  | 2.88d |
| 46 | 3.5 | **Iluminação** | 48.75d | 2027-01-11 | 2027-04-13 |  |  | -1.25d |
| 47 |  | Dutos, caixas de passagem e bases — Seg. 1 | 11.88d | 2027-01-11 | 2027-02-17 | 32 |  | 6.75d |
| 48 |  | Postes e luminárias LED — Seg. 1 | 9.88d | 2027-03-04 | 2027-04-01 | 47, 39 |  | -1.25d |
| 49 |  | Cabeamento, quadros de comando e energização — Seg. 1 | 8d | 2027-04-01 | 2027-04-13 | 48 |  | -1.25d |
| 50 | 4 | **Segmento 2 — km 18+000 ao km 24+000** | 278.75d | 2026-04-25 A | 2027-07-08 |  | 38% | 84.5d |
| 51 | 4.1 | **Terraplenagem** | 275.75d | 2026-04-25 A | 2027-07-05 |  | 75% | -10.75d |
| 52 |  | Desmatamento, destocamento e limpeza — Seg. 2 | 15d | 2026-04-25 A | 2026-05-13 A | 22 | 100% |  |
| 53 |  | Escavação, carga e transporte — material de 1ª categoria — Seg. 2 | 43d | 2026-07-03 A | 2026-08-21 A | 52, 23 | 100% |  |
| 54 |  | Escavação em material de 2ª e 3ª categoria — Seg. 2 | 25d | 2026-07-15 A | 2026-08-12 A | 53SS+10d | 100% |  |
| 55 |  | Aterro compactado — Seg. 2 | 44d | 2026-08-28 A | 2026-10-20 | 53, 54, 59, 25, 60 | 64% | 4d |
| 56 |  | Regularização e compactação do subleito — Seg. 2 | 12d | 2026-10-21 | 2026-11-04 | 55 |  | 10.88d |
| 57 |  | Proteção vegetal de taludes (hidrossemeadura) — Seg. 2 | 9.88d | 2027-06-21 | 2027-07-05 | 55, 71 |  | -10.75d |
| 58 | 4.2 | **Drenagem e Obras de Arte Correntes** | 209.12d | 2026-06-08 A | 2027-05-11 |  | 47% | -13.75d |
| 59 |  | Bueiros tubulares de concreto — Seg. 2 | 21.88d | 2026-06-08 A | 2026-07-07 A | 52, 29 | 100% |  |
| 60 |  | Bueiro celular de concreto — Seg. 2 | 19.88d | 2026-07-08 A | 2026-08-04 A | 59 | 100% |  |
| 61 |  | Drenos profundos longitudinais — Seg. 2 | 14.88d | 2026-10-21 | 2026-11-12 | 55 |  | 3d |
| 62 |  | Sarjetas e valetas de proteção — Seg. 2 | 17.88d | 2026-11-12 | 2026-12-17 | 61 |  | 43.75d |
| 63 |  | Meios-fios e descidas d'água — Seg. 2 | 14.88d | 2027-04-12 | 2027-05-11 | 62, 68 |  | -13.75d |
| 64 | 4.3 | **Pavimentação** | 127d | 2026-11-12 | 2027-06-21 |  |  | -13.75d |
| 65 |  | Sub-base granular — Seg. 2 | 17.88d | 2026-11-12 | 2026-12-17 | 56, 61, 35 |  | 3d |
| 66 |  | Base de brita graduada simples (BGS) — Seg. 2 | 17.88d | 2026-11-23 | 2027-01-05 | 65SS+6d |  | 3d |
| 67 |  | Imprimação — Seg. 2 | 5.88d | 2027-01-05 | 2027-01-27 | 66, 65 |  | 3d |
| 68 |  | CBUQ — camada de ligação (binder) — Seg. 2 | 14.88d | 2027-03-04 | 2027-04-12 | 67, 39 |  | -13.75d |
| 69 |  | Fresagem e reperfilagem da pista existente — Seg. 2 | 14.88d | 2027-04-12 | 2027-05-11 | 68 |  | -13.75d |
| 70 |  | CBUQ — capa de rolamento (pista nova e existente) — Seg. 2 | 17.88d | 2027-05-11 | 2027-06-07 | 69, 63 |  | -13.75d |

| ID | WBS | Task | Duration | Start | Finish | Predecessors | Complete | Total float |
| --- | --- | --- | --- | --- | --- | --- | --- | --- |
| 71 |  | Acostamentos e acabamento de bordos — Seg. 2 | 9.88d | 2027-06-08 | 2027-06-21 | 70 |  | -13.75d |
| 72 | 4.4 | **Sinalização e Segurança Viária** | 22.75d | 2027-06-08 | 2027-07-08 |  |  | -3.88d |
| 73 |  | Sinalização horizontal — Seg. 2 | 7.88d | 2027-06-08 | 2027-06-17 | 70 |  | -0.88d |
| 74 |  | Sinalização vertical e pórticos — Seg. 2 | 9.88d | 2027-06-08 | 2027-06-21 | 70, 73SS |  | -0.88d |
| 75 |  | Defensas metálicas e barreiras — Seg. 2 | 11.88d | 2027-06-21 | 2027-07-08 | 71 |  | -13.75d |
| 76 |  | Tachas e dispositivos auxiliares — Seg. 2 | 4.88d | 2027-06-17 | 2027-06-24 | 73 |  | 94.5d |
| 77 | 4.5 | **Iluminação** | 36.75d | 2027-05-11 | 2027-07-01 |  |  | -8.88d |
| 78 |  | Dutos, caixas de passagem e bases — Seg. 2 | 11.88d | 2027-05-11 | 2027-05-26 | 63 |  | -1.88d |
| 79 |  | Postes e luminárias LED — Seg. 2 | 9.88d | 2027-06-08 | 2027-06-21 | 78, 70 |  | -8.88d |
| 80 |  | Cabeamento, quadros de comando e energização — Seg. 2 | 8d | 2027-06-21 | 2027-07-01 | 79 |  | -8.88d |
| 81 | 5 | **Segmento 3 — km 24+000 ao km 30+000** | 246d | 2026-05-14 A | 2027-06-09 |  | 38% | 105.25d |
| 82 | 5.1 | **Terraplenagem** | 244d | 2026-05-14 A | 2027-06-07 |  | 82% | 107.25d |
| 83 |  | Desmatamento, destocamento e limpeza — Seg. 3 | 15d | 2026-05-14 A | 2026-05-30 A | 52 | 100% |  |
| 84 |  | Escavação, carga e transporte — material de 1ª categoria — Seg. 3 | 39d | 2026-06-01 A | 2026-07-16 A | 83, 19 | 100% |  |
| 85 |  | Escavação em material de 2ª e 3ª categoria — Seg. 3 | 25d | 2026-06-13 A | 2026-07-11 A | 84SS+10d | 100% |  |
| 86 |  | Aterro compactado — Seg. 3 | 47d | 2026-08-12 A | 2026-10-06 | 84, 85, 90 | 89% | -19.62d |
| 87 |  | Regularização e compactação do subleito — Seg. 3 | 12d | 2026-10-07 | 2026-10-21 | 86 |  | -12.75d |
| 88 |  | Proteção vegetal de taludes (hidrossemeadura) — Seg. 3 | 9.88d | 2027-05-21 | 2027-06-07 | 86, 101 |  | 107.25d |
| 89 | 5.2 | **Drenagem e Obras de Arte Correntes** | 160.38d | 2026-07-08 A | 2027-04-01 |  | 34% | -16.62d |
| 90 |  | Bueiros tubulares de concreto — Seg. 3 | 24.88d | 2026-07-08 A | 2026-08-11 A | 83, 59 | 100% |  |
| 91 |  | Drenos profundos longitudinais — Seg. 3 | 14.88d | 2026-10-07 | 2026-10-29 | 86 |  | -16.62d |
| 92 |  | Sarjetas e valetas de proteção — Seg. 3 | 17.88d | 2026-10-29 | 2026-11-30 | 91 |  | 21.12d |
| 93 |  | Meios-fios e descidas d'água — Seg. 3 | 14.88d | 2027-02-17 | 2027-04-01 | 92, 98 |  | -16.62d |
| 94 | 5.3 | **Pavimentação** | 115.25d | 2026-10-29 | 2027-05-21 |  |  | -16.62d |
| 95 |  | Sub-base granular — Seg. 3 | 17.88d | 2026-10-29 | 2026-11-30 | 87, 91 |  | -16.62d |
| 96 |  | Base de brita graduada simples (BGS) — Seg. 3 | 17.88d | 2026-11-09 | 2026-12-10 | 95SS+6d |  | -16.62d |
| 97 |  | Imprimação — Seg. 3 | 5.88d | 2026-12-10 | 2026-12-28 | 96, 95 |  | -16.62d |
| 98 |  | CBUQ — camada de ligação (binder) — Seg. 3 | 14.88d | 2026-12-28 | 2027-02-17 | 97 |  | -16.62d |
| 99 |  | Fresagem e reperfilagem da pista existente — Seg. 3 | 14.88d | 2027-02-17 | 2027-04-01 | 98 |  | -16.62d |
| 100 |  | CBUQ — capa de rolamento (pista nova e existente) — Seg. 3 | 17.88d | 2027-04-01 | 2027-05-05 | 99, 93 |  | -16.62d |
| 101 |  | Acostamentos e acabamento de bordos — Seg. 3 | 9.88d | 2027-05-05 | 2027-05-21 | 100 |  | -16d |
| 102 | 5.4 | **Sinalização e Segurança Viária** | 24.75d | 2027-05-05 | 2027-06-09 |  |  | -16d |
| 103 |  | Sinalização horizontal — Seg. 3 | 7.88d | 2027-05-05 | 2027-05-19 | 100 |  | -6d |
| 104 |  | Sinalização vertical e pórticos — Seg. 3 | 9.88d | 2027-05-05 | 2027-05-21 | 100, 103SS |  | -3.12d |
| 105 |  | Defensas metálicas e barreiras — Seg. 3 | 11.88d | 2027-05-21 | 2027-06-09 | 101 |  | -16d |
| 106 |  | Tachas e dispositivos auxiliares — Seg. 3 | 4.88d | 2027-05-19 | 2027-05-25 | 103 |  | -6d |
| 107 | 5.5 | **Iluminação** | 42.75d | 2027-04-01 | 2027-06-03 |  |  | -11.12d |
| 108 |  | Dutos, caixas de passagem e bases — Seg. 3 | 11.88d | 2027-04-01 | 2027-04-23 | 93 |  | -3.12d |
| 109 |  | Postes e luminárias LED — Seg. 3 | 9.88d | 2027-05-05 | 2027-05-21 | 108, 100 |  | -11.12d |
| 110 |  | Cabeamento, quadros de comando e energização — Seg. 3 | 8d | 2027-05-21 | 2027-06-03 | 109 |  | -11.12d |
| 111 | 6 | **Segmento 4 — km 30+000 ao km 36+000** | 282.62d | 2026-06-01 A | 2027-08-17 |  | 30% | 56.62d |
| 112 | 6.1 | **Terraplenagem** | 280.62d | 2026-06-01 A | 2027-08-13 |  | 58% | -14.62d |
| 113 |  | Desmatamento, destocamento e limpeza — Seg. 4 | 15d | 2026-06-01 A | 2026-06-18 A | 83 | 100% |  |
| 114 |  | Escavação, carga e transporte — material de 1ª categoria — Seg. 4 | 40d | 2026-07-17 A | 2026-09-01 A | 113, 84 | 100% |  |
| 115 |  | Escavação em material de 2ª e 3ª categoria — Seg. 4 | 23d | 2026-07-29 A | 2026-08-24 A | 114SS+10d | 100% |  |
| 116 |  | Aterro compactado — Seg. 4 | 44d | 2026-10-16 | 2026-12-12 | 114, 115, 121, 86, 122 |  | -5.88d |
| 117 |  | Regularização e compactação do subleito — Seg. 4 | 12d | 2026-12-12 | 2027-01-06 | 116 |  | 9d |
| 118 |  | Proteção vegetal de taludes (hidrossemeadura) — Seg. 4 | 9.88d | 2027-07-30 | 2027-08-13 | 116, 133 |  | -14.62d |
| 119 |  | Remanejamento de cercas da faixa de domínio — Seg. 4 | 11.88d | 2026-06-19 A | 2026-07-06 A | 113 | 100% |  |
| 120 | 6.2 | **Drenagem e Obras de Arte Correntes** | 191d | 2026-08-12 A | 2027-06-21 |  | 38% | -16.62d |
| 121 |  | Bueiros tubulares de concreto — Seg. 4 | 24.88d | 2026-08-12 A | 2026-09-17 A | 113, 90 | 100% |  |
| 122 |  | Bueiro celular de concreto — Seg. 4 | 19.75d | 2026-09-17 A | 2026-10-16 | 121 | 50% | -4.88d |
| 123 |  | Drenos profundos longitudinais — Seg. 4 | 14.88d | 2026-12-14 | 2027-02-01 | 116 |  | -5d |
| 124 |  | Sarjetas e valetas de proteção — Seg. 4 | 17.88d | 2027-02-01 | 2027-03-25 | 123 |  | 25.75d |
| 125 |  | Meios-fios e descidas d'água — Seg. 4 | 14.88d | 2027-05-31 | 2027-06-21 | 124, 130 |  | -16.62d |
| 126 | 6.3 | **Pavimentação** | 113.88d | 2027-02-01 | 2027-07-30 |  |  | -16.62d |
| 127 |  | Sub-base granular — Seg. 4 | 17.88d | 2027-02-01 | 2027-03-25 | 117, 123, 96 |  | -5d |
| 128 |  | Base de brita graduada simples (BGS) — Seg. 4 | 17.88d | 2027-02-16 | 2027-04-06 | 127SS+6d |  | -5d |
| 129 |  | Imprimação — Seg. 4 | 5.88d | 2027-04-06 | 2027-04-16 | 128, 127 |  | -5d |
| 130 |  | CBUQ — camada de ligação (binder) — Seg. 4 | 14.88d | 2027-05-05 | 2027-05-31 | 129, 100 |  | -16.62d |
| 131 |  | Fresagem e reperfilagem da pista existente — Seg. 4 | 14.88d | 2027-05-31 | 2027-06-21 | 130 |  | -16.62d |
| 132 |  | CBUQ — capa de rolamento (pista nova e existente) — Seg. 4 | 17.88d | 2027-06-22 | 2027-07-16 | 131, 125 |  | -16.62d |
| 133 |  | Acostamentos e acabamento de bordos — Seg. 4 | 9.88d | 2027-07-16 | 2027-07-30 | 132 |  | -16.62d |
| 134 | 6.4 | **Sinalização e Segurança Viária** | 21.75d | 2027-07-16 | 2027-08-17 |  |  | -7.62d |
| 135 |  | Sinalização horizontal — Seg. 4 | 7.88d | 2027-07-16 | 2027-07-28 | 132 |  | -7.62d |
| 136 |  | Sinalização vertical e pórticos — Seg. 4 | 9.88d | 2027-07-16 | 2027-07-30 | 132, 135SS |  | 68.5d |
| 137 |  | Defensas metálicas e barreiras — Seg. 4 | 11.88d | 2027-07-30 | 2027-08-17 | 133 |  | -16.62d |
| 138 |  | Tachas e dispositivos auxiliares — Seg. 4 | 4.88d | 2027-07-28 | 2027-08-04 | 135 |  | -7.62d |
| 139 | 6.5 | **Iluminação** | 36.75d | 2027-06-22 | 2027-08-11 |  |  | -12.75d |
| 140 |  | Dutos, caixas de passagem e bases — Seg. 4 | 11.88d | 2027-06-22 | 2027-07-07 | 125 |  | -5.75d |

| ID | WBS | Task | Duration | Start | Finish | Predecessors | Complete | Total float |
| --- | --- | --- | --- | --- | --- | --- | --- | --- |
| 141 |  | Postes e luminárias LED — Seg. 4 | 9.88d | 2027-07-16 | 2027-07-30 | 140, 132 |  | -12.75d |
| 142 |  | Cabeamento, quadros de comando e energização — Seg. 4 | 8d | 2027-07-30 | 2027-08-11 | 141 |  | -12.75d |
| 143 | 7 | **Obras de Arte Especiais — Viaduto V-01 (km 27+400)** | 326.25d | 2026-04-22 A | 2027-09-10 |  | 28% | -8.25d |
| 144 | 7.1 | **Infraestrutura** | 134.88d | 2026-04-22 A | 2026-11-03 |  | 84% | 0d |
| 145 |  | Sondagens complementares e locação dos apoios | 10d | 2026-04-22 A | 2026-05-06 A | 15 | 100% |  |
| 146 |  | Projeto executivo da OAE — revisão e liberação para execução | 34d | 2026-05-07 A | 2026-06-24 A | 145, 16 | 100% |  |
| 147 |  | Estacas escavadas — apoios centrais (P1 a P3) | 36.88d | 2026-06-25 A | 2026-08-14 A | 146 | 100% |  |
| 148 |  | Estacas escavadas — encontros (E1 e E2) | 24.88d | 2026-08-17 A | 2026-09-22 A | 147 | 100% |  |
| 149 |  | Blocos de coroamento | 27.75d | 2026-09-22 A | 2026-11-03 | 148 | 25% | -8.25d |
| 150 | 7.2 | **Mesoestrutura** | 90.75d | 2026-11-03 | 2027-04-19 |  |  | -8.25d |
| 151 |  | Pilares | 37.88d | 2026-11-03 | 2027-02-01 | 149 |  | -8.25d |
| 152 |  | Travessas | 24.88d | 2027-02-01 | 2027-04-09 | 151 |  | -8.25d |
| 153 |  | Encontros e alas | 29.88d | 2026-11-17 | 2027-02-10 | 151SS+10d |  | 24.62d |
| 154 |  | Aparelhos de apoio | 6d | 2027-04-09 | 2027-04-19 | 152, 153 |  | -8.25d |
| 155 | 7.3 | **Superestrutura** | 170.5d | 2026-11-03 | 2027-08-11 |  |  | -8.25d |
| 156 |  | Fabricação das vigas pré-moldadas protendidas | 39.88d | 2026-11-03 | 2027-02-10 | 151SS |  | 30.62d |
| 157 |  | Lançamento das vigas pré-moldadas | 12d | 2027-04-19 | 2027-05-06 | 154, 156 |  | -8.25d |
| 158 |  | Pré-lajes e armação do tabuleiro | 28d | 2027-05-06 | 2027-06-16 | 157 |  | -8.25d |
| 159 |  | Concretagem do tabuleiro | 17.88d | 2027-06-16 | 2027-07-13 | 158 |  | -8.25d |
| 160 |  | Lajes de transição | 9.88d | 2027-07-13 | 2027-07-27 | 159, 164FF+5d |  | -3.25d |
| 161 |  | Barreiras New Jersey e guarda-corpos | 14.88d | 2027-07-13 | 2027-08-03 | 159 |  | -8.25d |
| 162 |  | Juntas de dilatação | 6d | 2027-08-03 | 2027-08-11 | 161, 160 |  | -8.25d |
| 163 | 7.4 | **Acabamentos e Acessos** | 88.62d | 2027-05-06 | 2027-09-10 |  |  | -8.25d |
| 164 |  | Aterros de acesso aos encontros | 25d | 2027-05-06 | 2027-06-05 | 157 |  | 33.5d |
| 165 |  | Impermeabilização e pavimentação do tabuleiro | 7.88d | 2027-08-11 | 2027-08-23 | 162 |  | -8.25d |
| 166 |  | Sinalização e iluminação do viaduto | 8d | 2027-08-23 | 2027-09-02 | 165 |  | -8.25d |
| 167 |  | Prova de carga e inspeção final | 5d | 2027-09-02 | 2027-09-10 | 166 |  | -8.25d |
| 168 | 8 | **Desmobilização e Entrega** | 196.25d | 2027-01-06 | 2027-11-09 |  |  | 0d |
| 169 |  | Limpeza final e recomposição das áreas de apoio | 10d | 2027-09-10 | 2027-09-24 | 5, 6, 7, 8, 9 |  | -3.25d |
| 170 |  | Recuperação ambiental de jazidas e caminhos de serviço | 15d | 2027-01-06 | 2027-01-30 | 4 |  | 219.38d |
| 171 |  | Projeto as built e data book | 25d | 2027-07-16 | 2027-08-20 | 132, 159 |  | 20.12d |
| 172 |  | Vistoria final com a fiscalização | 5d | 2027-09-24 | 2027-10-01 | 169, 171 |  | -3.25d |
| 173 |  | Correção de pendências da vistoria | 10d | 2027-10-01 | 2027-10-18 | 172 |  | -3.25d |
| 174 |  | Desmobilização do canteiro e da usina | 15d | 2027-10-18 | 2027-11-09 | 173 |  | -3.25d |

## Version 2 (data date 2026-10-30, saved 2026-11-25, file rodovia-ficticia-rev04.mpp)

Note of the change: Example: the two revisions as .mpp, to try the Project tab

Last finish 2027-11-09 → 2027-12-01 (+22d). Complete tasks 35 → 39.

Added:

| ID | Task | Duration | Start | Finish | Predecessors | Resources |
| --- | --- | --- | --- | --- | --- | --- |
| 57 | Contenção em gabião — talude do km 21+300 — Seg. 2 | 14.88d | 2026-11-05 | 2026-11-27 | 55 | Muro de gabião [1800 m³] |

Removed: 119 Remanejamento de cercas da faixa de domínio — Seg. 4

Changed:

| ID | Task | Start | Finish | Duration | Complete | Total float | Predecessors | Other |
| --- | --- | --- | --- | --- | --- | --- | --- | --- |
| 1 | **Marcos Contratuais** |  | 2027-11-09 → 2027-12-01 (+22d) | 401.25d → 416.25d |  | -3.25d → -18.25d |  |  |
| 4 | Conclusão da terraplenagem — todos os segmentos | 2027-01-06 → 2027-01-11 (+5d) | 2027-01-06 → 2027-01-11 (+5d) |  |  | 20d → 17d |  |  |
| 5 | Liberação ao tráfego — Segmento 1 — km 12+000 ao km 18+000 | 2027-04-23 → 2027-05-04 (+11d) | 2027-04-23 → 2027-05-04 (+11d) |  |  | -8.12d → -15.25d |  |  |
| 6 | Liberação ao tráfego — Segmento 2 — km 18+000 ao km 24+000 | 2027-07-08 → 2027-07-14 (+6d) | 2027-07-08 → 2027-07-14 (+6d) |  |  | -13.75d → -17.88d |  |  |
| 7 | Liberação ao tráfego — Segmento 3 — km 24+000 ao km 30+000 | 2027-06-09 → 2027-06-17 (+8d) | 2027-06-09 → 2027-06-17 (+8d) |  |  | -16d → -22d |  |  |
| 8 | Liberação ao tráfego — Segmento 4 — km 30+000 ao km 36+000 | 2027-08-17 → 2027-08-25 (+8d) | 2027-08-17 → 2027-08-25 (+8d) |  |  | -16.62d → -22.62d |  |  |
| 9 | Conclusão do Viaduto V-01 (km 27+400) | 2027-09-10 → 2027-10-01 (+21d) | 2027-09-10 → 2027-10-01 (+21d) |  |  | -8.25d → -23.25d |  |  |
| 10 | Termo de Recebimento Provisório (TRP) | 2027-11-09 → 2027-12-01 (+22d) | 2027-11-09 → 2027-12-01 (+22d) |  |  | -3.25d → -18.25d |  |  |
| 20 | **Segmento 1 — km 12+000 ao km 18+000** |  | 2027-04-23 → 2027-05-04 (+11d) | 238.12d → 245.25d | 51% → 61% | -8.12d → -15.25d |  |  |
| 21 | **Terraplenagem** |  | 2027-04-19 → 2027-04-30 (+11d) | 235.12d → 243.25d |  | -5.12d → -13.25d |  |  |
| 27 | Proteção vegetal de taludes (hidrossemeadura) — Seg. 1 | 2027-04-01 → 2027-04-12 (+11d) | 2027-04-19 → 2027-04-30 (+11d) |  |  | -5.12d → -13.25d |  |  |
| 28 | **Drenagem e Obras de Arte Correntes** |  | 2027-01-11 → 2027-01-27 (+16d) | 169.5d → 178.62d | 66% → 80% | -13.75d → -17.88d |  |  |
| 29 | Bueiros tubulares de concreto — Seg. 1 |  | 2026-06-09 A → 2026-06-02 A (-7d) | 27.88d → 24.88d |  |  |  |  |
| 31 | Sarjetas e valetas de proteção — Seg. 1 |  | 2026-10-19 → 2026-10-21 A (+2d) | 17.75d → 19.88d | 39% → 100% | 15d → none |  |  |
| 32 | Meios-fios e descidas d'água — Seg. 1 | 2026-12-01 → 2026-12-08 (+7d) | 2027-01-11 → 2027-01-27 (+16d) |  |  | -13.75d → -17.88d |  |  |
| 33 | **Pavimentação** |  | 2027-04-01 → 2027-04-12 (+11d) | 107.25d → 114.38d | 8% → 40% | -8.12d → -15.25d |  |  |
| 34 | Sub-base granular — Seg. 1 |  | 2026-10-19 → 2026-10-23 A (+4d) | 17.75d → 21.88d | 39% → 100% | -7.75d → none |  |  |
| 35 | Base de brita graduada simples (BGS) — Seg. 1 |  | 2026-10-27 → 2026-11-09 (+13d) | 17.75d → 25.75d | 5% → 85% | -13.75d → -4.88d |  |  |
| 36 | Imprimação — Seg. 1 | 2026-10-27 → 2026-10-29 A (+2d) | 2026-11-06 → 2026-11-11 (+5d) | 5.88d → 8.75d | 0% → 21% | -13.75d → -17.88d |  |  |
| 37 | CBUQ — camada de ligação (binder) — Seg. 1 | 2026-11-06 → 2026-11-11 (+5d) | 2026-12-01 → 2026-12-08 (+7d) |  |  | -13.75d → -17.88d |  |  |
| 38 | Fresagem e reperfilagem da pista existente — Seg. 1 | 2026-12-01 → 2026-12-08 (+7d) | 2027-01-11 → 2027-01-27 (+16d) |  |  | -13.75d → -17.88d |  |  |
| 39 | CBUQ — capa de rolamento (pista nova e existente) — Seg. 1 | 2027-01-11 → 2027-01-27 (+16d) | 2027-03-04 → 2027-03-19 (+15d) |  |  | -13.75d → -17.88d |  |  |
| 40 | Acostamentos e acabamento de bordos — Seg. 1 | 2027-03-04 → 2027-03-19 (+15d) | 2027-04-01 → 2027-04-12 (+11d) |  |  | -8.12d → -15.25d |  |  |
| 41 | **Sinalização e Segurança Viária** | 2027-03-04 → 2027-03-19 (+15d) | 2027-04-23 → 2027-05-04 (+11d) | 29.75d → 27.75d |  | -8.12d → -15.25d |  |  |
| 42 | Sinalização horizontal — Seg. 1 | 2027-03-04 → 2027-03-19 (+15d) | 2027-03-30 → 2027-04-07 (+8d) |  |  | 2.88d → -4.25d |  |  |
| 43 | Sinalização vertical e pórticos — Seg. 1 | 2027-03-04 → 2027-03-19 (+15d) | 2027-04-01 → 2027-04-12 (+11d) |  |  | 6.75d → -0.38d |  |  |
| 44 | Defensas metálicas e barreiras — Seg. 1 | 2027-04-01 → 2027-04-12 (+11d) | 2027-04-23 → 2027-05-04 (+11d) |  |  | -8.12d → -15.25d |  |  |
| 45 | Tachas e dispositivos auxiliares — Seg. 1 | 2027-03-30 → 2027-04-07 (+8d) | 2027-04-07 → 2027-04-16 (+9d) |  |  | 2.88d → -4.25d |  |  |
| 46 | **Iluminação** | 2027-01-11 → 2027-01-27 (+16d) | 2027-04-13 → 2027-04-23 (+10d) | 48.75d → 46.75d |  | -1.25d → -8.38d |  |  |
| 47 | Dutos, caixas de passagem e bases — Seg. 1 | 2027-01-11 → 2027-01-27 (+16d) | 2027-02-17 → 2027-03-02 (+13d) |  |  | 6.75d → 1.62d |  |  |
| 48 | Postes e luminárias LED — Seg. 1 | 2027-03-04 → 2027-03-19 (+15d) | 2027-04-01 → 2027-04-12 (+11d) |  |  | -1.25d → -8.38d |  |  |
| 49 | Cabeamento, quadros de comando e energização — Seg. 1 | 2027-04-01 → 2027-04-12 (+11d) | 2027-04-13 → 2027-04-23 (+10d) |  |  | -1.25d → -8.38d |  |  |
| 50 | **Segmento 2 — km 18+000 ao km 24+000** |  | 2027-07-08 → 2027-07-14 (+6d) | 278.75d → 282.88d | 38% → 41% | 84.5d → 95.38d |  |  |
| 51 | **Terraplenagem** |  | 2027-07-05 → 2027-07-12 (+7d) | 275.75d → 280.88d | 75% → 77% | -10.75d → -15.88d |  |  |
| 55 | Aterro compactado — Seg. 2 |  | 2026-10-20 → 2026-11-04 (+15d) | 44d → 56d | 64% → 95% | 4d → -5d |  |  |
| 56 | Regularização e compactação do subleito — Seg. 2 | 2026-10-21 → 2026-11-05 (+15d) | 2026-11-04 → 2026-11-18 (+14d) |  |  | 10.88d → 2.88d |  |  |
| 58 | Proteção vegetal de taludes (hidrossemeadura) — Seg. 2 | 2027-06-21 → 2027-06-28 (+7d) | 2027-07-05 → 2027-07-12 (+7d) |  |  | -10.75d → -15.88d | 55, 72 → 55, 72, 57 |  |
| 59 | **Drenagem e Obras de Arte Correntes** |  | 2027-05-11 → 2027-05-17 (+6d) | 209.12d → 213.25d |  | -13.75d → -17.88d |  |  |
| 62 | Drenos profundos longitudinais — Seg. 2 | 2026-10-21 → 2026-11-05 (+15d) | 2026-11-12 → 2026-11-27 (+15d) |  |  | 3d → -4d |  |  |
| 63 | Sarjetas e valetas de proteção — Seg. 2 | 2026-11-12 → 2026-12-28 (+46d) | 2026-12-17 → 2027-02-19 (+64d) |  |  | 43.75d → 16.62d |  | constraint none → start no earlier than 2026-12-28 |
| 64 | Meios-fios e descidas d'água — Seg. 2 | 2027-04-12 → 2027-04-20 (+8d) | 2027-05-11 → 2027-05-17 (+6d) |  |  | -13.75d → -17.88d |  |  |
| 65 | **Pavimentação** | 2026-11-12 → 2026-11-27 (+15d) | 2027-06-21 → 2027-06-25 (+4d) | 127d → 121.12d |  | -13.75d → -17.88d |  |  |
| 66 | Sub-base granular — Seg. 2 | 2026-11-12 → 2026-11-27 (+15d) | 2026-12-17 → 2027-01-21 (+35d) |  |  | 3d → -4d |  |  |
| 67 | Base de brita graduada simples (BGS) — Seg. 2 | 2026-11-23 → 2026-12-08 (+15d) | 2027-01-05 → 2027-02-04 (+30d) |  |  | 3d → -4d |  |  |
| 68 | Imprimação — Seg. 2 | 2027-01-05 → 2027-02-04 (+30d) | 2027-01-27 → 2027-02-23 (+27d) |  |  | 3d → -4d |  |  |
| 69 | CBUQ — camada de ligação (binder) — Seg. 2 | 2027-03-04 → 2027-03-19 (+15d) | 2027-04-12 → 2027-04-20 (+8d) |  |  | -13.75d → -17.88d |  |  |
| 70 | Fresagem e reperfilagem da pista existente — Seg. 2 | 2027-04-12 → 2027-04-20 (+8d) | 2027-05-11 → 2027-05-17 (+6d) |  |  | -13.75d → -17.88d |  |  |
| 71 | CBUQ — capa de rolamento (pista nova e existente) — Seg. 2 | 2027-05-11 → 2027-05-17 (+6d) | 2027-06-07 → 2027-06-14 (+7d) |  |  | -13.75d → -17.88d |  |  |
| 72 | Acostamentos e acabamento de bordos — Seg. 2 | 2027-06-08 → 2027-06-14 (+6d) | 2027-06-21 → 2027-06-25 (+4d) |  |  | -13.75d → -17.88d |  |  |
| 73 | **Sinalização e Segurança Viária** | 2027-06-08 → 2027-06-14 (+6d) | 2027-07-08 → 2027-07-14 (+6d) |  |  | -3.88d → -8d |  |  |
| 74 | Sinalização horizontal — Seg. 2 | 2027-06-08 → 2027-06-14 (+6d) | 2027-06-17 → 2027-06-23 (+6d) |  |  | -0.88d → -5d |  |  |
| 75 | Sinalização vertical e pórticos — Seg. 2 | 2027-06-08 → 2027-06-14 (+6d) | 2027-06-21 → 2027-06-25 (+4d) |  |  | -0.88d → -5d |  |  |
| 76 | Defensas metálicas e barreiras — Seg. 2 | 2027-06-21 → 2027-06-28 (+7d) | 2027-07-08 → 2027-07-14 (+6d) |  |  | -13.75d → -17.88d |  |  |
| 77 | Tachas e dispositivos auxiliares — Seg. 2 | 2027-06-17 → 2027-06-24 (+7d) | 2027-06-24 → 2027-06-30 (+6d) |  |  | 94.5d → 105.38d |  |  |
| 78 | **Iluminação** | 2027-05-11 → 2027-05-17 (+6d) | 2027-07-01 → 2027-07-07 (+6d) |  |  | -8.88d → -13d |  |  |
| 79 | Dutos, caixas de passagem e bases — Seg. 2 | 2027-05-11 → 2027-05-17 (+6d) | 2027-05-26 → 2027-06-04 (+9d) |  |  | -1.88d → -7d |  |  |
| 80 | Postes e luminárias LED — Seg. 2 | 2027-06-08 → 2027-06-14 (+6d) | 2027-06-21 → 2027-06-25 (+4d) |  |  | -8.88d → -13d |  |  |
| 81 | Cabeamento, quadros de comando e energização — Seg. 2 | 2027-06-21 → 2027-06-28 (+7d) | 2027-07-01 → 2027-07-07 (+6d) |  |  | -8.88d → -13d |  |  |
| 82 | **Segmento 3 — km 24+000 ao km 30+000** |  | 2027-06-09 → 2027-06-17 (+8d) | 246d → 252d | 38% → 46% | 105.25d → 114.25d |  |  |
| 83 | **Terraplenagem** |  | 2027-06-07 → 2027-06-15 (+8d) | 244d → 250d | 82% → 94% | 107.25d → 116.25d |  |  |
| 87 | Aterro compactado — Seg. 3 |  | 2026-10-06 → 2026-10-09 A (+3d) | 47d → 50d | 89% → 100% | -19.62d → none |  |  |
| 88 | Regularização e compactação do subleito — Seg. 3 | 2026-10-07 → 2026-10-10 A (+3d) | 2026-10-21 → 2026-10-27 A (+6d) | 12d → 14d | 0% → 100% | -12.75d → none |  |  |
| 89 | Proteção vegetal de taludes (hidrossemeadura) — Seg. 3 | 2027-05-21 → 2027-06-02 (+12d) | 2027-06-07 → 2027-06-15 (+8d) |  |  | 107.25d → 116.25d |  |  |
| 90 | **Drenagem e Obras de Arte Correntes** |  | 2027-04-01 → 2027-04-14 (+13d) | 160.38d → 169.38d | 34% → 49% | -16.62d → -22.62d |  |  |
| 92 | Drenos profundos longitudinais — Seg. 3 | 2026-10-07 → 2026-10-13 A (+6d) | 2026-10-29 → 2026-11-12 (+14d) | 14.88d → 21.75d | 0% → 64% | -16.62d → -22.62d |  |  |
| 93 | Sarjetas e valetas de proteção — Seg. 3 | 2026-10-29 → 2026-11-12 (+14d) | 2026-11-30 → 2026-12-17 (+17d) |  |  | 21.12d → 17.12d |  |  |
| 94 | Meios-fios e descidas d'água — Seg. 3 | 2027-02-17 → 2027-03-11 (+22d) | 2027-04-01 → 2027-04-14 (+13d) |  |  | -16.62d → -22.62d |  |  |
| 95 | **Pavimentação** | 2026-10-29 → 2026-11-12 (+14d) | 2027-05-21 → 2027-06-02 (+12d) | 115.25d → 113.25d |  | -16.62d → -22.62d |  |  |
| 96 | Sub-base granular — Seg. 3 | 2026-10-29 → 2026-11-12 (+14d) | 2026-11-30 → 2026-12-17 (+17d) |  |  | -16.62d → -22.62d |  |  |
| 97 | Base de brita graduada simples (BGS) — Seg. 3 | 2026-11-09 → 2026-11-23 (+14d) | 2026-12-10 → 2027-01-05 (+26d) |  |  | -16.62d → -22.62d |  |  |

| ID | Task | Start | Finish | Duration | Complete | Total float | Predecessors | Other |
| --- | --- | --- | --- | --- | --- | --- | --- | --- |
| 98 | Imprimação — Seg. 3 | 2026-12-10 → 2027-01-05 (+26d) | 2026-12-28 → 2027-01-25 (+28d) |  |  | -16.62d → -22.62d |  |  |
| 99 | CBUQ — camada de ligação (binder) — Seg. 3 | 2026-12-28 → 2027-01-25 (+28d) | 2027-02-17 → 2027-03-11 (+22d) |  |  | -16.62d → -22.62d |  |  |
| 100 | Fresagem e reperfilagem da pista existente — Seg. 3 | 2027-02-17 → 2027-03-11 (+22d) | 2027-04-01 → 2027-04-14 (+13d) |  |  | -16.62d → -22.62d |  |  |
| 101 | CBUQ — capa de rolamento (pista nova e existente) — Seg. 3 | 2027-04-01 → 2027-04-14 (+13d) | 2027-05-05 → 2027-05-17 (+12d) |  |  | -16.62d → -22.62d |  |  |
| 102 | Acostamentos e acabamento de bordos — Seg. 3 | 2027-05-05 → 2027-05-17 (+12d) | 2027-05-21 → 2027-06-02 (+12d) |  |  | -16d → -22d |  |  |
| 103 | **Sinalização e Segurança Viária** | 2027-05-05 → 2027-05-17 (+12d) | 2027-06-09 → 2027-06-17 (+8d) | 24.75d → 22.75d |  | -16d → -22d |  |  |
| 104 | Sinalização horizontal — Seg. 3 | 2027-05-05 → 2027-05-17 (+12d) | 2027-05-19 → 2027-05-31 (+12d) |  |  | -6d → -13d |  |  |
| 105 | Sinalização vertical e pórticos — Seg. 3 | 2027-05-05 → 2027-05-17 (+12d) | 2027-05-21 → 2027-06-02 (+12d) |  |  | -3.12d → -10.12d |  |  |
| 106 | Defensas metálicas e barreiras — Seg. 3 | 2027-05-21 → 2027-06-02 (+12d) | 2027-06-09 → 2027-06-17 (+8d) |  |  | -16d → -22d | 102 → 102, 94 |  |
| 107 | Tachas e dispositivos auxiliares — Seg. 3 | 2027-05-19 → 2027-05-31 (+12d) | 2027-05-25 → 2027-06-04 (+10d) |  |  | -6d → -13d |  |  |
| 108 | **Iluminação** | 2027-04-01 → 2027-04-14 (+13d) | 2027-06-03 → 2027-06-14 (+11d) | 42.75d → 40.75d |  | -11.12d → -18.12d |  |  |
| 109 | Dutos, caixas de passagem e bases — Seg. 3 | 2027-04-01 → 2027-04-14 (+13d) | 2027-04-23 → 2027-05-07 (+14d) |  |  | -3.12d → -12.12d |  |  |
| 110 | Postes e luminárias LED — Seg. 3 | 2027-05-05 → 2027-05-17 (+12d) | 2027-05-21 → 2027-06-02 (+12d) |  |  | -11.12d → -18.12d |  |  |
| 111 | Cabeamento, quadros de comando e energização — Seg. 3 | 2027-05-21 → 2027-06-02 (+12d) | 2027-06-03 → 2027-06-14 (+11d) |  |  | -11.12d → -18.12d |  |  |
| 112 | **Segmento 4 — km 30+000 ao km 36+000** |  | 2027-08-17 → 2027-08-25 (+8d) | 282.62d → 288.62d | 30% → 33% | 56.62d → 65.62d |  |  |
| 113 | **Terraplenagem** |  | 2027-08-13 → 2027-08-23 (+10d) | 280.62d → 286.62d | 58% → 60% | -14.62d → -20.62d |  |  |
| 117 | Aterro compactado — Seg. 4 | 2026-10-16 → 2026-10-21 A (+5d) | 2026-12-12 → 2026-12-18 (+6d) |  | 0% → 20% | -5.88d → 9.88d |  |  |
| 118 | Regularização e compactação do subleito — Seg. 4 | 2026-12-12 → 2026-12-19 (+7d) | 2027-01-06 → 2027-01-11 (+5d) |  |  | 9d → 9.88d |  |  |
| 119 | Proteção vegetal de taludes (hidrossemeadura) — Seg. 4 | 2027-07-30 → 2027-08-09 (+10d) | 2027-08-13 → 2027-08-23 (+10d) |  |  | -14.62d → -20.62d |  |  |
| 120 | **Drenagem e Obras de Arte Correntes** |  | 2027-06-21 → 2027-06-29 (+8d) | 191d → 197d | 38% → 50% | -16.62d → -22.62d |  |  |
| 122 | Bueiro celular de concreto — Seg. 4 |  | 2026-10-16 → 2026-10-21 A (+5d) | 19.75d → 22.88d | 50% → 100% | -4.88d → none |  |  |
| 123 | Drenos profundos longitudinais — Seg. 4 | 2026-12-14 → 2026-12-22 (+8d) | 2027-02-01 → 2027-02-10 (+9d) |  |  | -5d → 24.75d |  |  |
| 124 | Sarjetas e valetas de proteção — Seg. 4 | 2027-02-01 → 2027-02-10 (+9d) | 2027-03-25 → 2027-03-31 (+6d) |  |  | 25.75d → 24.75d |  |  |
| 125 | Meios-fios e descidas d'água — Seg. 4 | 2027-05-31 → 2027-06-09 (+9d) | 2027-06-21 → 2027-06-29 (+8d) |  |  | -16.62d → -22.62d |  |  |
| 126 | **Pavimentação** | 2027-02-01 → 2027-01-13 (-19d) | 2027-07-30 → 2027-08-09 (+10d) | 113.88d → 130.75d |  | -16.62d → -22.62d |  | baseline finish 2027-06-16 → 2027-06-30 |
| 127 | Sub-base granular — Seg. 4 | 2027-02-01 → 2027-01-13 (-19d) | 2027-03-25 → 2027-03-04 (-21d) |  |  | -5d → 8.88d | 118, 123, 97 → 118, 97 |  |
| 128 | Base de brita graduada simples (BGS) — Seg. 4 | 2027-02-16 → 2027-01-25 (-22d) | 2027-04-06 → 2027-03-16 (-21d) |  |  | -5d → 8.88d |  |  |
| 129 | Imprimação — Seg. 4 | 2027-04-06 → 2027-03-16 (-21d) | 2027-04-16 → 2027-03-31 (-16d) |  |  | -5d → 8.88d |  |  |
| 130 | CBUQ — camada de ligação (binder) — Seg. 4 | 2027-05-05 → 2027-05-17 (+12d) | 2027-05-31 → 2027-06-09 (+9d) |  |  | -16.62d → -22.62d |  |  |
| 131 | Fresagem e reperfilagem da pista existente — Seg. 4 | 2027-05-31 → 2027-06-09 (+9d) | 2027-06-21 → 2027-06-29 (+8d) |  |  | -16.62d → -22.62d |  |  |
| 132 | CBUQ — capa de rolamento (pista nova e existente) — Seg. 4 | 2027-06-22 → 2027-06-30 (+8d) | 2027-07-16 → 2027-07-26 (+10d) |  |  | -16.62d → -22.62d |  | baseline start 2027-05-07 → 2027-06-07; baseline finish 2027-06-02 → 2027-06-30 |
| 133 | Acostamentos e acabamento de bordos — Seg. 4 | 2027-07-16 → 2027-07-26 (+10d) | 2027-07-30 → 2027-08-09 (+10d) |  |  | -16.62d → -22.62d |  |  |
| 134 | **Sinalização e Segurança Viária** | 2027-07-16 → 2027-07-26 (+10d) | 2027-08-17 → 2027-08-25 (+8d) |  |  | -7.62d → -13.62d |  |  |
| 135 | Sinalização horizontal — Seg. 4 | 2027-07-16 → 2027-07-26 (+10d) | 2027-07-28 → 2027-08-05 (+8d) |  |  | -7.62d → -13.62d |  |  |
| 136 | Sinalização vertical e pórticos — Seg. 4 | 2027-07-16 → 2027-07-26 (+10d) | 2027-07-30 → 2027-08-09 (+10d) |  |  | 68.5d → 77.5d |  |  |
| 137 | Defensas metálicas e barreiras — Seg. 4 | 2027-07-30 → 2027-08-09 (+10d) | 2027-08-17 → 2027-08-25 (+8d) |  |  | -16.62d → -22.62d |  |  |
| 138 | Tachas e dispositivos auxiliares — Seg. 4 | 2027-07-28 → 2027-08-05 (+8d) | 2027-08-04 → 2027-08-12 (+8d) |  |  | -7.62d → -13.62d |  |  |
| 139 | **Iluminação** | 2027-06-22 → 2027-06-30 (+8d) | 2027-08-11 → 2027-08-19 (+8d) |  |  | -12.75d → -18.75d |  |  |
| 140 | Dutos, caixas de passagem e bases — Seg. 4 | 2027-06-22 → 2027-06-30 (+8d) | 2027-07-07 → 2027-07-16 (+9d) |  |  | -5.75d → -12.75d |  |  |
| 141 | Postes e luminárias LED — Seg. 4 | 2027-07-16 → 2027-07-26 (+10d) | 2027-07-30 → 2027-08-09 (+10d) |  |  | -12.75d → -18.75d |  |  |
| 142 | Cabeamento, quadros de comando e energização — Seg. 4 | 2027-07-30 → 2027-08-09 (+10d) | 2027-08-11 → 2027-08-19 (+8d) |  |  | -12.75d → -18.75d |  |  |
| 143 | **Obras de Arte Especiais — Viaduto V-01 (km 27+400)** |  | 2027-09-10 → 2027-10-01 (+21d) | 326.25d → 341.25d | 28% → 32% | -8.25d → -23.25d |  |  |
| 144 | **Infraestrutura** |  | 2026-11-03 → 2026-11-11 (+8d) | 134.88d → 140.88d | 84% → 96% |  |  |  |
| 149 | Blocos de coroamento |  | 2026-11-03 → 2026-11-11 (+8d) | 27.75d → 33.75d | 25% → 83% | -8.25d → -23.25d |  |  |
| 150 | **Mesoestrutura** | 2026-11-03 → 2026-11-11 (+8d) | 2027-04-19 → 2027-04-30 (+11d) | 90.75d → 92.75d |  | -8.25d → -23.25d |  |  |
| 151 | Pilares | 2026-11-03 → 2026-11-11 (+8d) | 2027-02-01 → 2027-02-19 (+18d) |  |  | -8.25d → -23.25d |  |  |
| 152 | Travessas | 2027-02-01 → 2027-02-19 (+18d) | 2027-04-09 → 2027-04-22 (+13d) |  |  | -8.25d → -23.25d |  |  |
| 153 | Encontros e alas | 2026-11-17 → 2026-11-26 (+9d) | 2027-02-10 → 2027-02-23 (+13d) |  |  | 24.62d → 10.62d |  |  |
| 154 | Aparelhos de apoio | 2027-04-09 → 2027-04-22 (+13d) | 2027-04-19 → 2027-04-30 (+11d) |  |  | -8.25d → -23.25d |  |  |
| 155 | **Superestrutura** | 2026-11-03 → 2026-11-11 (+8d) | 2027-08-11 → 2027-09-01 (+21d) | 170.5d → 179.5d |  | -8.25d → -23.25d |  |  |
| 156 | Fabricação das vigas pré-moldadas protendidas | 2026-11-03 → 2026-11-11 (+8d) | 2027-02-10 → 2027-02-25 (+15d) |  |  | 30.62d → 15.62d |  |  |
| 157 | Lançamento das vigas pré-moldadas | 2027-04-19 → 2027-04-30 (+11d) | 2027-05-06 → 2027-05-31 (+25d) | 12d → 20d |  | -8.25d → -23.25d |  |  |
| 158 | Pré-lajes e armação do tabuleiro | 2027-05-06 → 2027-05-31 (+25d) | 2027-06-16 → 2027-07-08 (+22d) |  |  | -8.25d → -23.25d |  |  |
| 159 | Concretagem do tabuleiro | 2027-06-16 → 2027-07-08 (+22d) | 2027-07-13 → 2027-08-03 (+21d) |  |  | -8.25d → -23.25d |  |  |
| 160 | Lajes de transição | 2027-07-13 → 2027-08-03 (+21d) | 2027-07-27 → 2027-08-17 (+21d) |  |  | -3.25d → -18.25d |  |  |
| 161 | Barreiras New Jersey e guarda-corpos | 2027-07-13 → 2027-08-03 (+21d) | 2027-08-03 → 2027-08-24 (+21d) |  |  | -8.25d → -23.25d |  |  |
| 162 | Juntas de dilatação | 2027-08-03 → 2027-08-24 (+21d) | 2027-08-11 → 2027-09-01 (+21d) |  |  | -8.25d → -23.25d |  |  |
| 163 | **Acabamentos e Acessos** | 2027-05-06 → 2027-05-31 (+25d) | 2027-09-10 → 2027-10-01 (+21d) | 88.62d → 87.62d |  | -8.25d → -23.25d |  |  |
| 164 | Aterros de acesso aos encontros | 2027-05-06 → 2027-05-31 (+25d) | 2027-06-05 → 2027-06-29 (+24d) |  |  | 33.5d → 13.5d |  |  |
| 165 | Impermeabilização e pavimentação do tabuleiro | 2027-08-11 → 2027-09-01 (+21d) | 2027-08-23 → 2027-09-14 (+22d) |  |  | -8.25d → -23.25d |  |  |
| 166 | Sinalização e iluminação do viaduto | 2027-08-23 → 2027-09-14 (+22d) | 2027-09-02 → 2027-09-24 (+22d) |  |  | -8.25d → -23.25d |  |  |
| 167 | Prova de carga e inspeção final | 2027-09-02 → 2027-09-24 (+22d) | 2027-09-10 → 2027-10-01 (+21d) |  |  | -8.25d → -23.25d |  |  |
| 168 | **Desmobilização e Entrega** | 2027-01-06 → 2027-01-13 (+7d) | 2027-11-09 → 2027-12-01 (+22d) | 196.25d → 208.25d |  |  |  |  |
| 169 | Limpeza final e recomposição das áreas de apoio | 2027-09-10 → 2027-10-01 (+21d) | 2027-09-24 → 2027-10-18 (+24d) |  |  | -3.25d → -18.25d |  |  |
| 170 | Recuperação ambiental de jazidas e caminhos de serviço | 2027-01-06 → 2027-01-13 (+7d) | 2027-01-30 → 2027-02-04 (+5d) |  |  | 219.38d → 234.25d |  |  |
| 171 | Projeto as built e data book | 2027-07-16 → 2027-08-03 (+18d) | 2027-08-20 → 2027-09-08 (+19d) |  |  | 20.12d → 8.5d |  |  |
| 172 | Vistoria final com a fiscalização | 2027-09-24 → 2027-10-18 (+24d) | 2027-10-01 → 2027-10-25 (+24d) |  |  | -3.25d → -18.25d |  |  |
| 173 | Correção de pendências da vistoria | 2027-10-01 → 2027-10-25 (+24d) | 2027-10-18 → 2027-11-09 (+22d) |  |  | -3.25d → -18.25d |  |  |
| 174 | Desmobilização do canteiro e da usina | 2027-10-18 → 2027-11-09 (+22d) | 2027-11-09 → 2027-12-01 (+22d) |  |  | -3.25d → -18.25d |  |  |
